# ProjetSSI

Schedule from GanttProject, 2013-11-27 to 2014-03-03.

## Calendars

- Project calendar: Mon-Fri working; Sat-Sun off.

## Resources

| Resource |
| --- |
| Emile |
| Jean-Baptiste |
| Julien |
| Ouissem |
| Yves |

## Schedule

| ID | WBS | Task | Type | Duration | Start | Finish | Predecessors | Complete | Constraint | Resources | Charge (jH) |
| --- | --- | --- | --- | --- | --- | --- | --- | --- | --- | --- | --- |
| 1 | 1 | Rédaction des documents |  | 38d | 2013-11-27 | 2014-01-17 |  | 100% |  | Emile; Jean-Baptiste; Julien; Ouissem; Yves | 50 |
| 2 | 2 | Début du projet | milestone | 0d | 2014-01-20 | 2014-01-20 | 1 |  |  | Emile; Jean-Baptiste; Julien; Ouissem; Yves |  |
| 3 | 3 | Prise en compte des remarques sur les documents |  | 3d | 2014-01-20 | 2014-01-22 |  | 100% |  | Emile; Jean-Baptiste; Julien; Ouissem; Yves | 50 |
| 4 | 4 | **Développement proxy applicatif** |  | 23d | 2014-01-20 | 2014-02-19 | 2 | 32% |  | Emile; Jean-Baptiste; Julien; Ouissem |  |
| 5 | 4.1 | Développement structure proxy |  | 5d | 2014-01-20 | 2014-01-24 | 2 | 100% |  | Emile | 20 |
| 6 | 4.2 | Installation autorité sur client par admin |  | 2d | 2014-01-23 | 2014-01-24 | 2, 3 | 100% | start no earlier than 2014-01-22 | Julien | 15 |
| 7 | 4.3 | Installateur autorité sur client par client |  | 3d | 2014-01-23 | 2014-01-27 | 2, 3 | 100% |  | Emile; Ouissem | 15 |
| 8 | 4.4 | Génération d'un certificat |  | 3d | 2014-01-23 | 2014-01-27 | 2, 3 | 100% |  | Julien | 20 |
| 9 | 4.5 | Etablissement d'une connexion chiffrée |  | 2d | 2014-01-27 | 2014-01-28 | 2, 5 |  |  | Emile; Ouissem | 30 |
| 10 | 4.6 | Transchiffrement des paquets |  | 4d | 2014-01-29 | 2014-02-03 | 8, 9 |  |  | Emile; Ouissem | 40 |
| 11 | 4.7 | Tests unitaires |  | 3d | 2014-02-04 | 2014-02-06 | 6, 8, 9, 10 |  |  | Jean-Baptiste | 50 |
| 12 | 4.8 | Rédaction de la documentation |  | 10d | 2014-01-27 | 2014-02-07 | 6 |  |  | Emile; Julien; Ouissem | 20 |
| 13 | 4.9 | Intégration des composants de l'application |  | 2d | 2014-02-07 | 2014-02-10 | 6, 10, 11 |  |  | Emile; Ouissem | 30 |
| 14 | 4.10 | Tests d'intégration |  | 1d | 2014-02-11 | 2014-02-11 | 11, 13 |  |  | Emile; Jean-Baptiste; Ouissem | 40 |
| 15 | 4.11 | Prise en compte des remarques du Client |  | 5d | 2014-02-13 | 2014-02-19 | 23 |  |  | Emile; Julien; Ouissem | 30 |
| 16 | 5 | **Etude forge faux certificats** |  | 23d | 2014-01-20 | 2014-02-19 |  | 21% |  |  |  |
| 17 | 5.1 | Etat de l'art collisions MD5 |  | 8d | 2014-01-20 | 2014-01-29 | 2 | 80% |  | Emile; Jean-Baptiste; Julien; Ouissem; Yves | 160 |
| 18 | 5.2 | Rapport faisabilité collision |  | 3d | 2014-01-30 | 2014-02-03 | 17 |  |  | Ouissem; Yves | 40 |
| 19 | 5.3 | Développement application recherche collision |  | 5d | 2014-02-04 | 2014-02-10 | 18 |  |  | Emile; Jean-Baptiste; Julien; Ouissem; Yves | 150 |
| 20 | 5.4 | Lancement programme recherche collisions |  | 2d | 2014-02-11 | 2014-02-12 | 19 |  |  | Yves | 30 |
| 21 | 5.5 | Rédaction dossier récapitulatif |  | 7d | 2014-02-04 | 2014-02-12 | 18 |  |  | Emile; Jean-Baptiste; Julien; Ouissem; Yves | 140 |
| 22 | 5.6 | Prise en compte des remarques |  | 5d | 2014-02-13 | 2014-02-19 | 23 |  |  | Emile; Jean-Baptiste; Julien; Ouissem; Yves | 30 |
| 23 | 6 | Livraison provisoire | milestone | 0d | 2014-02-13 | 2014-02-13 | 14, 20, 21 |  |  | Jean-Baptiste | 3 |
| 24 | 7 | Démonstration : HTTP, colisions simples | milestone | 0d | 2014-01-30 | 2014-01-30 |  |  |  |  |  |
| 25 | 8 | Démonstration : connexion SSL/TLS | milestone | 0d | 2014-02-06 | 2014-02-06 |  |  |  |  |  |
| 26 | 9 | Livraison finale | milestone | 0d | 2014-02-20 | 2014-02-20 | 3, 15, 22 |  |  | Emile; Jean-Baptiste; Julien; Ouissem; Yves | 3 |
| 27 | 10 | Préparation de la revue |  | 7d | 2014-02-20 | 2014-02-28 | 26 |  |  | Emile; Jean-Baptiste; Julien; Ouissem; Yves | 50 |
| 28 | 11 | Revue de fin de projet | milestone | 0d | 2014-03-03 | 2014-03-03 | 27 |  | start no earlier than 2014-02-28 | Emile; Jean-Baptiste; Julien; Ouissem; Yves | 5 |
